# Simple Project Plan

Schedule from MS Project, 2016-01-09 to 2016-02-23, A marks actual dates.

## Calendars

- Standard: Mon-Fri 08:00-12:00, 13:00-17:00; Sat-Sun off. Exceptions (off unless hours are given): 2016-01-09 08:00-12:00, 13:00-17:00.

## Schedule

| ID | WBS | Task | Type | Duration | Start | Finish | Predecessors | Complete | Remaining | Total slack | Free slack | Constraint |
| --- | --- | --- | --- | --- | --- | --- | --- | --- | --- | --- | --- | --- |
| 1 | 1 | **FIRST Build Season** |  | 32d | 2016-01-09 | 2016-02-23 |  |  |  | 0d |  |  |
| 2 | 1.1 | Start | milestone, manual | 0d | 2016-01-09 | 2016-01-09 |  |  |  |  |  |  |
| 3 | 1.2 | Robot Running | milestone | 0d | 2016-02-09 | 2016-02-09 | 23, 30, 35 |  |  | 3d | 0d |  |
| 4 | 1.3 | Robot Complete | milestone | 0d | 2016-02-17 | 2016-02-17 | 3, 36 |  |  | 3d |  |  |
| 5 | 1.4 | Stop | milestone, manual | 0d | 2016-02-23 | 2016-02-23 |  |  |  |  |  |  |
| 6 | 2 | **Brainstorm & Rough Design** |  | 4d | 2016-01-09 A | 2016-01-13 | 2 | 50% | 2d | 3d |  |  |
| 7 | 2.1 | Goals |  | 2d | 2016-01-09 A | 2016-01-11 A |  | 100% |  |  |  |  |
| 8 | 2.2 | Concept |  | 2d | 2016-01-12 | 2016-01-13 | 7 |  |  | 3d | 0d |  |
| 9 | 2.3 | Brainstorm & Rough Design Complete | milestone | 0d | 2016-01-13 | 2016-01-13 | 8 |  |  | 3d | 0d |  |
| 10 | 3 | **FIRST Choice** |  | 7d | 2016-01-14 | 2016-01-22 | 2 |  |  | 9d |  |  |
| 11 | 3.1 | Decide what parts to order |  | 1d | 2016-01-14 | 2016-01-14 | 9 |  |  | 9d | 0d |  |
| 12 | 3.2 | Order parts |  | 1d | 2016-01-15 | 2016-01-15 | 11 |  |  | 9d | 0d | finish no earlier than 2016-01-14 |
| 13 | 3.3 | Receive parts |  | 5d | 2016-01-18 | 2016-01-22 | 12 |  |  | 9d | 0d |  |
| 14 | 3.4 | FIRST Choice Complete | milestone | 0d | 2016-01-22 | 2016-01-22 | 13 |  |  | 9d | 6d | finish no earlier than 2016-01-22 |
| 15 | 4 | **Controls** |  | 17d | 2016-01-14 | 2016-02-05 | 9 |  |  | 5d |  |  |
| 16 | 4.1 | Setup tools |  | 1d | 2016-01-14 | 2016-01-14 | 9 |  |  | 27d |  |  |
| 17 | 4.2 | Determine control system requirements |  | 1d | 2016-01-14 | 2016-01-14 | 8 |  |  | 5d | 0d |  |
| 18 | 4.3 | Assign tasks |  | 1d | 2016-01-15 | 2016-01-15 | 17 |  |  | 5d | 0d |  |
| 19 | 4.4 | Develop Software |  | 2w | 2016-01-18 | 2016-01-29 | 18 |  |  | 5d | 0d |  |
| 20 | 4.5 | Bench Test |  | 1d | 2016-02-01 | 2016-02-01 | 19, 33 |  |  | 5d | 0d |  |
| 21 | 4.6 | Fix bugs |  | 3d | 2016-02-02 | 2016-02-04 | 20 |  |  | 5d | 0d |  |
| 22 | 4.7 | Test on robot |  | 1d | 2016-02-05 | 2016-02-05 | 21 |  |  | 5d | 0d |  |
| 23 | 4.8 | Controls Complete | milestone | 0d | 2016-02-05 | 2016-02-05 | 22 |  |  | 5d | 2d |  |
| 24 | 5 | **Mechanical** |  | 17d | 2016-01-14 | 2016-02-05 | 9 |  |  | 3d |  |  |
| 25 | 5.1 | CAD |  | 2w | 2016-01-14 | 2016-01-27 | 9 |  |  | 3d | 0d |  |
| 26 | 5.2 | Assemble frame |  | 2d | 2016-01-14 | 2016-01-15 | 9 |  |  | 16d | 13d |  |
| 27 | 5.3 | Machine manipulators |  | 3d | 2016-01-28 | 2016-02-01 | 25 |  |  | 3d | 0d |  |
| 28 | 5.4 | Assemble manipulator |  | 2d | 2016-02-02 | 2016-02-03 | 27, 14 |  |  | 3d | 0d |  |
| 29 | 5.5 | Put manipulator on robot |  | 2d | 2016-02-04 | 2016-02-05 | 28, 26 |  |  | 3d | 0d |  |
| 30 | 5.6 | Mechanical Complete | milestone | 0d | 2016-02-05 | 2016-02-05 | 29 |  |  | 5d | 2d |  |

Notes:
- 7: Figure out what the goals are for the robot
- 8: Design a concept robot. Something that everyone can understand the end look and goal of.
- 16: ·LabVIEW / ·FRC Update / ·Tortoise SVN / ·VI Package Manager / ·TSVN for LabVIEW / ·Checkout Repository
- 25: Tasks with the pushpin next to them are manually scheduled tasks. Use them when you don't want Project to move the task. Also, you can enter freeform text in the duration, start and finish fields or leave them blank if you don't have all the information yet.

| ID | WBS | Task | Type | Duration | Start | Finish | Predecessors | Total slack | Free slack |
| --- | --- | --- | --- | --- | --- | --- | --- | --- | --- |
| 31 | 6 | **Electrical** |  | 19d? | 2016-01-14 | 2016-02-09 | 9 | 9d |  |
| 32 | 6.1 | Inventory parts |  | 1w | 2016-01-14 | 2016-01-20 | 2 | 23d |  |
| 33 | 6.2 | Bench Test |  | 1d? | 2016-01-15 | 2016-01-15 | 17 | 15d | 10d |
| 34 | 6.3 | Wire robot |  | 2d | 2016-02-08 | 2016-02-09 | 29, 14 | 3d | 0d |
| 35 | 6.4 | Electrical Complete | milestone | 0d | 2016-02-09 | 2016-02-09 | 34 | 3d | 0d |
| 36 | 7 | **Beautification** |  | 6d | 2016-02-10 | 2016-02-17 | 3 | 3d | 0d |
| 37 | 7.1 | Paint |  | 3d | 2016-02-10 | 2016-02-12 |  | 3d | 0d |
| 38 | 7.2 | Side Panels |  | 2d | 2016-02-15 | 2016-02-16 | 37 | 3d | 0d |
| 39 | 7.3 | Decals |  | 1d | 2016-02-17 | 2016-02-17 | 38 | 3d | 0d |
| 40 | 7.4 | Beutifiation Complete | milestone | 0d | 2016-02-17 | 2016-02-17 | 39 | 3d |  |
